# Extension of the Existing Rail Monitoring System in HEET

Schedule from Primavera P6, 2027-01-03 to 2028-12-07, data date 2027-01-03.
Must finish by 2028-12-07

## Calendars

- SAR-OFFICE (Sun-Thu 8h): Mon-Thu 08:00-16:00; Fri-Sat off; Sun 08:00-16:00. Exceptions (off unless hours are given): 2027-02-22, 2027-03-08 to 2027-03-11, 2027-05-16 to 2027-05-19, 2027-09-23.
- SAR-FIELD (Sun-Thu 8h): Mon-Thu 08:00-16:00; Fri-Sat off; Sun 08:00-16:00. Exceptions (off unless hours are given): 2027-02-22, 2027-03-08 to 2027-03-11, 2027-05-16 to 2027-05-19, 2027-09-23.
- SAR-PROCUREMENT (7-day 8h): Mon-Sun 08:00-16:00.

## Schedule

| ID | WBS | Activity | Type | Duration | Start | Finish | Predecessors | Total float | Free float | Constraint | Calendar |
| --- | --- | --- | --- | --- | --- | --- | --- | --- | --- | --- | --- |
|  | 1.1 | **PROJECT MANAGEMENT & MILESTONES** |  |  | 2027-01-03 | 2027-12-07 |  |  |  |  |  |
|  | 1.1.1 | **Project Milestones** |  |  | 2027-01-03 | 2027-12-07 |  |  |  |  |  |
| MS-001 |  | NTP - Notice to Proceed (assumed date; re-base on actual NTP) | milestone | 0d | 2027-01-03 | 2027-01-03 |  | 0d |  | start on or after 2027-01-03 |  |
| MS-010 |  | Stage 1 complete - mobilization done & IFC package submitted | milestone | 0d | 2027-02-02 | 2027-02-02 | MOB-1040, DSN-1320, SUB-1410, SUB-1420, SUB-1430, SUB-1440, SUB-1450 | 168d |  |  |  |
| MS-070 |  | Stage 2 complete - procurement, construction & installation complete | milestone | 0d | 2027-10-10 | 2027-10-10 | CIV-540, TDR-3520, WX-3620, COM-3720, CLD-3820, INT-4010, PRM-2160, PRM-2180, PWR-3430, MS-010, TST-4110, CIV-140, CIV-240, CIV-340, CIV-440 | 0d |  |  |  |
| MS-100 |  | Stage 3 complete - commissioning & performance validation complete | milestone | 0d | 2027-11-07 | 2027-11-07 | CMS-4320 | 0d |  |  |  |
| MS-120 |  | Taking-Over - planned completion (contract limit 02-Jan-2028 = NTP + 12 months) | milestone | 0d | 2027-12-07 | 2027-12-07 | HND-5090 | 0d |  |  |  |
|  | 1.1.2 | **PRELIMINARIES & GENERAL REQUIREMENTS** |  |  | 2027-01-03 | 2027-12-07 |  |  |  |  |  |
| MGT-1060 |  | Project management, QA/QC & HSE supervision and records (LOE) | level of effort | 233d | 2027-01-03 | 2027-12-07 | MOB-1010 SS, HND-5090 FF | 0d |  |  |  |
| MGT-1070 |  | Weekly & monthly progress reporting (LOE) | level of effort | 233d | 2027-01-03 | 2027-12-07 | MOB-1010 SS, HND-5090 FF | 0d |  |  |  |
| MOB-1010 |  | Kick-off meeting & project management set-up |  | 2d | 2027-01-03 | 2027-01-04 | MS-001 | 0d |  |  |  |
| MGT-1090 |  | Obtain SAR risk scores & confirm Section priority (SAR input) |  | 3d | 2027-01-05 | 2027-01-07 | MOB-1010 | 25d | 9d |  |  |
| MOB-1020 |  | Insurance (CAR / TPL) & performance bond issuance |  | 4d | 2027-01-05 | 2027-01-10 | MOB-1010 | 17d | 0d |  |  |
| MOB-1030 |  | PTS training & PO induction - batch 1 (initial team) |  | 3d | 2027-01-05 | 2027-01-07 | MOB-1010 | 18d | 1d |  |  |
| MOB-1050 |  | Site security, fencing & traffic management (LOE) | level of effort | 204d | 2027-01-19 | 2027-11-14 | MOB-1040 SS, DEM-5100 FF | 0d |  |  | SAR-FIELD (Sun-Thu 8h) |
| MOB-1080 |  | Protection Officer on site during all field works (LOE) | level of effort | 204d | 2027-01-19 | 2027-11-14 | SRV-1210 SS, DEM-5100 FF | 0d |  |  | SAR-FIELD (Sun-Thu 8h) |
| MOB-3005 |  | PTS training & PO induction - batch 2 (field crews) |  | 3d | 2027-01-31 | 2027-02-02 | PRM-2105 | 41d | 25d |  |  |
|  | 1.1.3 | **Site Mobilization, Establishment & Demobilization** |  |  | 2027-01-19 | 2027-11-14 |  |  |  |  |  |
| MOB-1040 |  | Site establishment - offices & temporary facilities |  | 8d | 2027-01-19 | 2027-01-28 | PRM-1120 | 44d | 3d |  | SAR-FIELD (Sun-Thu 8h) |
| MOB-3010 |  | Mobilize plant, equipment & labour; compound & logistics set-up |  | 5d | 2027-03-17 | 2027-03-23 | PRM-2120, APR-1520, APR-1510, MOB-1040, MOB-3005 | 16d | 0d |  | SAR-FIELD (Sun-Thu 8h) |
| DEM-5100 |  | Demobilization & site clearance |  | 5d | 2027-11-08 | 2027-11-14 | DOC-5040, CMS-4320 | 16d |  |  | SAR-FIELD (Sun-Thu 8h) |
|  | 1.2 | **PERMITS & AUTHORITY APPROVALS (PA)** |  |  | 2027-01-11 | 2027-09-06 |  |  |  |  |  |
|  | 1.2.1 | **SAR Work Permits (Work Permit Portal), Extensions & TTF02** |  |  | 2027-01-11 | 2027-09-06 |  |  |  |  |  |
| PRM-1110 |  | Prepare & submit WP-01 request in Work Permit Portal (survey & assessment) |  | 1d | 2027-01-11 | 2027-01-11 | MOB-1020, MOB-1030 | 17d | 0d |  |  |
| PRM-1120 |  | SAR review & issue WP-01 (Work Permit Portal) |  | 5d | 2027-01-12 | 2027-01-18 | PRM-1110 | 17d | 0d |  |  |
| PRM-2105 |  | Prepare TTF02 / Delivery Plan, PICOP certificates & PTS card register |  | 3d | 2027-01-26 | 2027-01-28 | APR-1520, MOB-1030 | 37d | 0d |  |  |
| PRM-2110 |  | Prepare & submit WP-02 (route construction works, Sections 1-5) in Work Permit Portal |  | 2d | 2027-03-02 | 2027-03-03 | PRM-2105, APR-1580 | 16d | 0d |  |  |
| PRM-2210 |  | Prepare & submit WP-03 (steel conduits at culverts & track crossings) incl. protection / possession request |  | 2d | 2027-03-02 | 2027-03-03 | PRM-2105, APR-1580 | 29d | 0d |  |  |
| PRM-2310 |  | Prepare & submit WP-04 (power, shelter & equipment works at monitoring station) |  | 2d | 2027-03-02 | 2027-03-03 | PRM-2105, APR-1580 | 109d | 0d |  |  |
| PRM-2120 |  | SAR review & issue WP-02 |  | 5d | 2027-03-04 | 2027-03-16 | PRM-2110 | 16d | 0d |  |  |
| PRM-2220 |  | SAR review & issue WP-03 (track crossings / possession) |  | 7d | 2027-03-04 | 2027-03-18 | PRM-2210 | 29d | 13d |  |  |
| PRM-2320 |  | SAR review & issue WP-04 |  | 5d | 2027-03-04 | 2027-03-16 | PRM-2310 | 109d | 5d |  |  |
| PRM-3110 |  | Prepare & submit WP-05 (testing, commissioning & live-system tie-in) in Work Permit Portal |  | 2d | 2027-03-25 | 2027-03-28 | APR-1670, PRM-2620 | 130d | 0d |  |  |
| PRM-3120 |  | SAR review & issue WP-05 |  | 5d | 2027-03-29 | 2027-04-04 | PRM-3110 | 130d |  |  |  |
| PRM-2150 |  | Permit extension 1 - progress report, updated insurance policy & TTF02 (Portal) |  | 2d | 2027-06-08 | 2027-06-09 | PRM-2120 FS+55d | 23d | 0d |  |  |
| PRM-2160 |  | SAR review & approve permit extension 1 |  | 3d | 2027-06-10 | 2027-06-14 | PRM-2150 | 23d | 0d |  |  |
| PRM-2170 |  | Permit extension 2 - progress report, updated insurance policy & TTF02 (Portal) |  | 2d | 2027-08-31 | 2027-09-01 | PRM-2160 FS+55d | 23d | 0d |  |  |
| PRM-2180 |  | SAR review & approve permit extension 2 |  | 3d | 2027-09-02 | 2027-09-06 | PRM-2170 | 23d |  |  |  |

| ID | WBS | Activity | Duration | Start | Finish | Predecessors | Total float | Free float | Calendar |
| --- | --- | --- | --- | --- | --- | --- | --- | --- | --- |
|  | 1.2.2 | **Utility, Telecom & Third-Party Approvals (TBC)** |  | 2027-01-24 | 2027-03-07 |  |  |  |  |
| PRM-2510 |  | Request SIM / data-service activation from STC (primary & backup SIM) | 2d | 2027-01-24 | 2027-01-25 | APR-1540 | 158d | 0d |  |
| PRM-2520 |  | STC SIM provisioning & activation | 5d | 2027-01-26 | 2027-02-01 | PRM-2510 | 158d | 54d |  |
| PRM-2410 |  | Submit load / connection request to SEC for power upgrade (applicability TBC) | 3d | 2027-02-02 | 2027-02-04 | DSN-1310 | 125d | 0d |  |
| PRM-2420 |  | SEC review & connection approval (duration TBC) | 15d | 2027-02-07 | 2027-02-28 | PRM-2410 | 125d | 25d |  |
| PRM-2610 |  | Request access / NOC & outage window - existing system & iSiteCentral owner | 3d | 2027-02-16 | 2027-02-18 | APR-1650 | 138d | 0d |  |
| PRM-2620 |  | Owner NOC & agreed tie-in / outage window | 10d | 2027-02-21 | 2027-03-07 | PRM-2610 | 138d | 9d |  |
|  | 1.3 | **ENGINEERING (E)** |  | 2027-01-05 | 2027-03-24 |  |  |  |  |
|  | 1.3.1 | **Survey & Assessment** |  | 2027-01-19 | 2027-01-27 |  |  |  |  |
| SRV-1210 |  | Existing system, power capacity & shelter assessment (incl. data correlation) | 5d | 2027-01-19 | 2027-01-25 | PRM-1120 | 18d | 0d | SAR-FIELD (Sun-Thu 8h) |
| SRV-1220 |  | Topographic survey, GPR utilities detection & dilapidation survey (5.5 km route) | 7d | 2027-01-19 | 2027-01-27 | PRM-1120 | 17d | 1d | SAR-FIELD (Sun-Thu 8h) |
|  | 1.3.2 | **Design & Engineering (Concept / Preliminary / Detailed-IFC)** |  | 2027-01-05 | 2027-03-01 |  |  |  |  |
|  | 1.3.2.1 | **Concept Design** |  | 2027-01-05 | 2027-01-21 |  |  |  |  |
|  | 1.3.2.1.1 | **Concept - Design** |  | 2027-01-05 | 2027-01-11 |  |  |  |  |
| DSN-1305 |  | Concept design - basis of design, route, system architecture & sizing (desktop, existing as-builts) | 5d | 2027-01-05 | 2027-01-11 | MOB-1010 | 16d | 0d |  |
|  | 1.3.2.1.2 | **Concept - Submittal (Contractor)** |  | 2027-01-12 | 2027-01-12 |  |  |  |  |
| SUB-1305 |  | Concept design package - submit to SAR | 1d | 2027-01-12 | 2027-01-12 | DSN-1305 | 16d | 0d |  |
|  | 1.3.2.1.3 | **Concept - SAR Approval** |  | 2027-01-13 | 2027-01-21 |  |  |  |  |
| APR-1305 |  | SAR review & approval - Concept design | 7d | 2027-01-13 | 2027-01-21 | SUB-1305 | 16d | 0d |  |
|  | 1.3.2.2 | **Preliminary Design** |  | 2027-01-12 | 2027-02-01 |  |  |  |  |
|  | 1.3.2.2.1 | **Preliminary - Design** |  | 2027-01-12 | 2027-01-20 |  |  |  |  |
| DSN-1307 |  | Preliminary design - route & cable layout, power/shelter sizing, interfaces, quantity check | 7d | 2027-01-12 | 2027-01-20 | DSN-1305 | 16d | 0d |  |
|  | 1.3.2.2.2 | **Preliminary - Submittal (Contractor)** |  | 2027-01-21 | 2027-01-21 |  |  |  |  |
| SUB-1307 |  | Preliminary design package - submit to SAR | 1d | 2027-01-21 | 2027-01-21 | DSN-1307 | 16d | 0d |  |

| ID | WBS | Activity | Duration | Start | Finish | Predecessors | Total float | Free float |
| --- | --- | --- | --- | --- | --- | --- | --- | --- |
|  | 1.3.2.2.3 | **Preliminary - SAR Approval** |  | 2027-01-24 | 2027-02-01 |  |  |  |
| APR-1307 |  | SAR review & approval - Preliminary design | 7d | 2027-01-24 | 2027-02-01 | SUB-1307, APR-1305 | 16d | 0d |
|  | 1.3.2.3 | **Detailed Design / IFC** |  | 2027-01-21 | 2027-03-01 |  |  |  |
|  | 1.3.2.3.1 | **Detailed / IFC - Design** |  | 2027-01-21 | 2027-02-01 |  |  |  |
| DSN-1310 |  | Detailed design - IFC drawings, specifications & calculations | 8d | 2027-01-21 | 2027-02-01 | DSN-1307, SRV-1210 SS, SRV-1210 FF, SRV-1220 FF+2d, MGT-1090 | 16d | 0d |
|  | 1.3.2.3.2 | **Detailed / IFC - Submittal (Contractor)** |  | 2027-02-02 | 2027-02-23 |  |  |  |
| DSN-1320 |  | IFC package QA check & submission to SAR | 1d | 2027-02-02 | 2027-02-02 | DSN-1310, APR-1307 | 16d | 0d |
| SUB-1570 |  | Address SAR comments & resubmit IFC package | 4d | 2027-02-17 | 2027-02-23 | APR-1560 | 16d | 0d |
|  | 1.3.2.3.3 | **Detailed / IFC - SAR Approval** |  | 2027-02-03 | 2027-03-01 |  |  |  |
| APR-1560 |  | SAR review - IFC design package | 10d | 2027-02-03 | 2027-02-16 | DSN-1320 | 16d | 0d |
| APR-1580 |  | SAR final approval - IFC package | 4d | 2027-02-24 | 2027-03-01 | SUB-1570 | 16d | 0d |
|  | 1.3.3 | **Other Engineering Submittals (Contractor)** |  | 2027-01-05 | 2027-03-15 |  |  |  |
| SUB-1410 |  | QA/QC Plan, HSE Plan & Project Execution Plan - prepare & submit | 5d | 2027-01-05 | 2027-01-11 | MOB-1010 | 50d | 0d |
| SUB-1420 |  | Method statements & ITPs (survey, trenching, cable laying, OTDR/splicing, track crossing, equipment) - prepare & submit | 8d | 2027-01-05 | 2027-01-14 | MOB-1010 | 37d | 0d |
| SUB-1490 |  | FAT procedures & test plans (TDR, cables, weather, comms, UPS, cloud hardware) | 6d | 2027-01-24 | 2027-01-31 | APR-1540 | 30d | 0d |
| SUB-1470 |  | Cybersecurity (NCA ECC-1/CSCC-1/OTCC-1, SAR OT/ICS) & local-cloud architecture design package | 10d | 2027-01-26 | 2027-02-08 | SRV-1210, APR-1305 | 81d | 0d |
| SUB-1480 |  | Interface Control Document - existing 1.5 km system & iSiteCentral | 8d | 2027-01-26 | 2027-02-04 | SRV-1210 | 138d | 0d |
| SUB-1630 |  | Address SAR comments & resubmit cyber/cloud design | 3d | 2027-02-24 | 2027-02-28 | APR-1620 | 81d | 0d |
| SUB-1495 |  | SAT, commissioning & performance-validation procedures | 6d | 2027-03-02 | 2027-03-15 | APR-1580 | 130d | 0d |
|  | 1.3.4 | **SAR Reviews & Approvals - Other Engineering** |  | 2027-01-12 | 2027-03-24 |  |  |  |
| APR-1510 |  | SAR review & approval - QA/QC, HSE & Execution Plans | 7d | 2027-01-12 | 2027-01-20 | SUB-1410 | 50d | 34d |
| APR-1520 |  | SAR review & approval - method statements & ITPs | 7d | 2027-01-17 | 2027-01-25 | SUB-1420 | 37d | 0d |
| APR-1660 |  | SAR review & approval - FAT procedures (SAR witness notice incl.) | 7d | 2027-02-01 | 2027-02-09 | SUB-1490 | 30d | 9d |
| APR-1650 |  | SAR / system-owner review - Interface Control Document | 7d | 2027-02-07 | 2027-02-15 | SUB-1480 | 138d | 0d |
| APR-1620 |  | SAR IT/OT & cybersecurity review - architecture design | 10d | 2027-02-09 | 2027-02-23 | SUB-1470 | 81d | 0d |
| APR-1640 |  | SAR final approval - cyber/cloud design | 3d | 2027-03-01 | 2027-03-03 | SUB-1630 | 81d | 0d |
| APR-1670 |  | SAR review & approval - SAT/commissioning procedures | 7d | 2027-03-16 | 2027-03-24 | SUB-1495 | 130d | 0d |

| ID | WBS | Activity | Duration | Start | Finish | Predecessors | Total float | Free float | Calendar |
| --- | --- | --- | --- | --- | --- | --- | --- | --- | --- |
|  | 1.4 | **PROCUREMENT (P)** |  | 2027-01-05 | 2027-05-05 |  |  |  |  |
|  | 1.4.1 | **Material Submittals (Contractor)** |  | 2027-01-05 | 2027-01-25 |  |  |  |  |
| SUB-1430 |  | Material submittal - DSS cable NZS-DSS-C02, 48-core FO cable, TDR coaxial cable | 5d | 2027-01-05 | 2027-01-11 | MOB-1010 | 0d |  |  |
| SUB-1440 |  | Material submittal - TDR system, weather station, comms modules/SIM, UPS & electrical panels, cloud hardware | 6d | 2027-01-05 | 2027-01-12 | MOB-1010 | 30d | 0d |  |
| SUB-1450 |  | Material submittal - FO closures, handholes/manholes, steel & rigid conduits, marker posts, sweet sand | 5d | 2027-01-05 | 2027-01-11 | MOB-1010 | 44d | 0d |  |
| SUB-1535 |  | Address SAR comments & resubmit cable materials | 3d | 2027-01-21 | 2027-01-25 | APR-1530 | 0d |  |  |
|  | 1.4.2 | **SAR Material Approvals** |  | 2027-01-12 | 2027-01-28 |  |  |  |  |
| APR-1530 |  | SAR review - cable materials (DSS, FO, TDR coax) | 7d | 2027-01-12 | 2027-01-20 | SUB-1430 | 0d |  |  |
| APR-1550 |  | SAR review & approval - civil materials (closures, handholes, conduits, markers, sand) | 5d | 2027-01-12 | 2027-01-18 | SUB-1450 | 44d | 0d |  |
| APR-1540 |  | SAR review & approval - equipment materials (TDR, weather, comms, UPS/panels, cloud HW) | 7d | 2027-01-13 | 2027-01-21 | SUB-1440 | 30d | 0d |  |
| APR-1536 |  | SAR final approval - cable materials | 3d | 2027-01-26 | 2027-01-28 | SUB-1535 | 0d |  |  |
|  | 1.4.3 | **LONG-LEAD ITEMS (LL) - PO, Manufacture, FAT, Shipping, Customs & Delivery** |  | 2027-01-19 | 2027-05-05 |  |  |  |  |
|  | 1.4.3.1 | **LL-01 DSS cable NZS-DSS-C02** |  | 2027-01-31 | 2027-05-02 |  |  |  |  |
| PRC-DSS10 |  | [LL-01] Place PO & supplier kick-off - DSS cable NZS-DSS-C02 (5,500 LM) | 3d | 2027-01-31 | 2027-02-02 | APR-1536 | 0d |  |  |
| PRC-DSS20 |  | [LL-01] Manufacture / supply - DSS cable NZS-DSS-C02 (5,500 LM) | 56d | 2027-02-03 | 2027-03-30 | PRC-DSS10 | 0d |  | SAR-PROCUREMENT (7-day 8h) |
| FAT-DSS |  | [LL-01] FAT at manufacturer - DSS cable NZS-DSS-C02 (5,500 LM) | 2d | 2027-03-31 | 2027-04-01 | PRC-DSS20, APR-1660 | 0d |  | SAR-PROCUREMENT (7-day 8h) |
| PRC-DSS30 |  | [LL-01] Shipping / import - DSS cable NZS-DSS-C02 (5,500 LM) | 21d | 2027-04-02 | 2027-04-22 | FAT-DSS | 0d |  | SAR-PROCUREMENT (7-day 8h) |
| PRC-DSS40 |  | [LL-01] Customs clearance & SABER conformity - DSS cable NZS-DSS-C02 (5,500 LM) | 7d | 2027-04-23 | 2027-04-29 | PRC-DSS30 | 0d |  | SAR-PROCUREMENT (7-day 8h) |
| PRC-DSS50 |  | [LL-01] Delivery to site (Heet) - DSS cable NZS-DSS-C02 (5,500 LM) | 3d | 2027-04-30 | 2027-05-02 | PRC-DSS40 | 0d |  | SAR-PROCUREMENT (7-day 8h) |
|  | 1.4.3.2 | **LL-02 48-core FO cable (DAS)** |  | 2027-01-31 | 2027-04-04 |  |  |  |  |
| PRC-FO10 |  | [LL-02] Place PO & supplier kick-off - Outdoor 48-core FO cable - DAS (5,500 LM) | 3d | 2027-01-31 | 2027-02-02 | APR-1536 | 22d | 0d |  |
| PRC-FO20 |  | [LL-02] Manufacture / supply - Outdoor 48-core FO cable - DAS (5,500 LM) | 35d | 2027-02-03 | 2027-03-09 | PRC-FO10 | 36d | 0d | SAR-PROCUREMENT (7-day 8h) |
| FAT-FO |  | [LL-02] FAT at manufacturer - Outdoor 48-core FO cable - DAS (5,500 LM) | 2d | 2027-03-10 | 2027-03-11 | PRC-FO20, APR-1660 | 36d | 0d | SAR-PROCUREMENT (7-day 8h) |
| PRC-FO30 |  | [LL-02] Shipping / import - Outdoor 48-core FO cable - DAS (5,500 LM) | 14d | 2027-03-12 | 2027-03-25 | FAT-FO | 36d | 0d | SAR-PROCUREMENT (7-day 8h) |
| PRC-FO40 |  | [LL-02] Customs clearance & SABER conformity - Outdoor 48-core FO cable - DAS (5,500 LM) | 7d | 2027-03-26 | 2027-04-01 | PRC-FO30 | 36d | 0d | SAR-PROCUREMENT (7-day 8h) |
| PRC-FO50 |  | [LL-02] Delivery to site (Heet) - Outdoor 48-core FO cable - DAS (5,500 LM) | 3d | 2027-04-02 | 2027-04-04 | PRC-FO40 | 36d |  | SAR-PROCUREMENT (7-day 8h) |

| ID | WBS | Activity | Duration | Start | Finish | Predecessors | Total float | Free float | Calendar |
| --- | --- | --- | --- | --- | --- | --- | --- | --- | --- |
|  | 1.4.3.3 | **LL-03 TDR coaxial cable** |  | 2027-01-31 | 2027-03-28 |  |  |  |  |
| PRC-TDRC10 |  | [LL-03] Place PO & supplier kick-off - TDR coaxial cable (5,500 LM) | 3d | 2027-01-31 | 2027-02-02 | APR-1536 | 39d | 0d |  |
| PRC-TDRC20 |  | [LL-03] Manufacture / supply - TDR coaxial cable (5,500 LM) | 28d | 2027-02-03 | 2027-03-02 | PRC-TDRC10 | 62d | 0d | SAR-PROCUREMENT (7-day 8h) |
| FAT-TDRC |  | [LL-03] FAT at manufacturer - TDR coaxial cable (5,500 LM) | 2d | 2027-03-03 | 2027-03-04 | PRC-TDRC20, APR-1660 | 62d | 0d | SAR-PROCUREMENT (7-day 8h) |
| PRC-TDRC30 |  | [LL-03] Shipping / import - TDR coaxial cable (5,500 LM) | 14d | 2027-03-05 | 2027-03-18 | FAT-TDRC | 62d | 0d | SAR-PROCUREMENT (7-day 8h) |
| PRC-TDRC40 |  | [LL-03] Customs clearance & SABER conformity - TDR coaxial cable (5,500 LM) | 7d | 2027-03-19 | 2027-03-25 | PRC-TDRC30 | 62d | 0d | SAR-PROCUREMENT (7-day 8h) |
| PRC-TDRC50 |  | [LL-03] Delivery to site (Heet) - TDR coaxial cable (5,500 LM) | 3d | 2027-03-26 | 2027-03-28 | PRC-TDRC40 | 62d |  | SAR-PROCUREMENT (7-day 8h) |
|  | 1.4.3.4 | **LL-04 TDR system** |  | 2027-01-24 | 2027-05-05 |  |  |  |  |
| PRC-TDR10 |  | [LL-04] Place PO & supplier kick-off - TDR system (interrogator, antenna & accessories) | 3d | 2027-01-24 | 2027-01-26 | APR-1540 | 85d | 0d |  |
| PRC-TDR20 |  | [LL-04] Manufacture / supply - TDR system (interrogator, antenna & accessories) | 70d | 2027-01-27 | 2027-04-06 | PRC-TDR10 | 132d | 0d | SAR-PROCUREMENT (7-day 8h) |
| FAT-TDR |  | [LL-04] FAT at manufacturer - TDR system (interrogator, antenna & accessories) | 5d | 2027-04-07 | 2027-04-11 | PRC-TDR20, APR-1660 | 132d | 0d | SAR-PROCUREMENT (7-day 8h) |
| PRC-TDR30 |  | [LL-04] Shipping / import - TDR system (interrogator, antenna & accessories) | 14d | 2027-04-12 | 2027-04-25 | FAT-TDR | 132d | 0d | SAR-PROCUREMENT (7-day 8h) |
| PRC-TDR40 |  | [LL-04] Customs clearance & SABER conformity - TDR system (interrogator, antenna & accessories) | 7d | 2027-04-26 | 2027-05-02 | PRC-TDR30 | 132d | 0d | SAR-PROCUREMENT (7-day 8h) |
| PRC-TDR50 |  | [LL-04] Delivery to site (Heet) - TDR system (interrogator, antenna & accessories) | 3d | 2027-05-03 | 2027-05-05 | PRC-TDR40 | 132d | 0d | SAR-PROCUREMENT (7-day 8h) |
|  | 1.4.3.5 | **LL-05 Weather station sensors** |  | 2027-01-24 | 2027-03-28 |  |  |  |  |
| PRC-WX10 |  | [LL-05] Place PO & supplier kick-off - Weather station sensors | 3d | 2027-01-24 | 2027-01-26 | APR-1540 | 116d | 0d |  |
| PRC-WX20 |  | [LL-05] Manufacture / supply - Weather station sensors | 35d | 2027-01-27 | 2027-03-02 | PRC-WX10 | 175d | 0d | SAR-PROCUREMENT (7-day 8h) |
| FAT-WX |  | [LL-05] FAT at manufacturer - Weather station sensors | 2d | 2027-03-03 | 2027-03-04 | PRC-WX20, APR-1660 | 175d | 0d | SAR-PROCUREMENT (7-day 8h) |
| PRC-WX30 |  | [LL-05] Shipping / import - Weather station sensors | 14d | 2027-03-05 | 2027-03-18 | FAT-WX | 175d | 0d | SAR-PROCUREMENT (7-day 8h) |
| PRC-WX40 |  | [LL-05] Customs clearance & SABER conformity - Weather station sensors | 7d | 2027-03-19 | 2027-03-25 | PRC-WX30 | 175d | 0d | SAR-PROCUREMENT (7-day 8h) |
| PRC-WX50 |  | [LL-05] Delivery to site (Heet) - Weather station sensors | 3d | 2027-03-26 | 2027-03-28 | PRC-WX40 | 175d | 24d | SAR-PROCUREMENT (7-day 8h) |
|  | 1.4.3.6 | **LL-06 Communication modules & SIM** |  | 2027-01-24 | 2027-03-17 |  |  |  |  |
| PRC-COM10 |  | [LL-06] Place PO & supplier kick-off - Communication modules & SIM hardware | 3d | 2027-01-24 | 2027-01-26 | APR-1540 | 124d | 0d |  |
| PRC-COM20 |  | [LL-06] Manufacture / supply - Communication modules & SIM hardware | 28d | 2027-01-27 | 2027-02-23 | PRC-COM10 | 187d | 0d | SAR-PROCUREMENT (7-day 8h) |
| FAT-COM |  | [LL-06] FAT at manufacturer - Communication modules & SIM hardware | 2d | 2027-02-24 | 2027-02-25 | PRC-COM20, APR-1660 | 187d | 0d | SAR-PROCUREMENT (7-day 8h) |
| PRC-COM30 |  | [LL-06] Shipping / import - Communication modules & SIM hardware | 10d | 2027-02-26 | 2027-03-07 | FAT-COM | 187d | 0d | SAR-PROCUREMENT (7-day 8h) |
| PRC-COM40 |  | [LL-06] Customs clearance & SABER conformity - Communication modules & SIM hardware | 7d | 2027-03-08 | 2027-03-14 | PRC-COM30 | 187d | 0d | SAR-PROCUREMENT (7-day 8h) |
| PRC-COM50 |  | [LL-06] Delivery to site (Heet) - Communication modules & SIM hardware | 3d | 2027-03-15 | 2027-03-17 | PRC-COM40 | 187d | 35d | SAR-PROCUREMENT (7-day 8h) |

| ID | WBS | Activity | Duration | Start | Finish | Predecessors | Total float | Free float | Calendar |
| --- | --- | --- | --- | --- | --- | --- | --- | --- | --- |
|  | 1.4.3.7 | **LL-07 UPS & electrical panels** |  | 2027-01-24 | 2027-04-10 |  |  |  |  |
| PRC-PWR10 |  | [LL-07] Place PO & supplier kick-off - UPS (min. 4 h) & electrical panels | 3d | 2027-01-24 | 2027-01-26 | APR-1540 | 93d | 0d |  |
| PRC-PWR20 |  | [LL-07] Manufacture / supply - UPS (min. 4 h) & electrical panels | 56d | 2027-01-27 | 2027-03-23 | PRC-PWR10 | 144d | 0d | SAR-PROCUREMENT (7-day 8h) |
| FAT-PWR |  | [LL-07] FAT at manufacturer - UPS (min. 4 h) & electrical panels | 3d | 2027-03-24 | 2027-03-26 | PRC-PWR20, APR-1660 | 144d | 0d | SAR-PROCUREMENT (7-day 8h) |
| PRC-PWR30 |  | [LL-07] Shipping / import - UPS (min. 4 h) & electrical panels | 7d | 2027-03-27 | 2027-04-02 | FAT-PWR | 144d | 0d | SAR-PROCUREMENT (7-day 8h) |
| PRC-PWR40 |  | [LL-07] Customs clearance & SABER conformity - UPS (min. 4 h) & electrical panels | 5d | 2027-04-03 | 2027-04-07 | PRC-PWR30 | 144d | 0d | SAR-PROCUREMENT (7-day 8h) |
| PRC-PWR50 |  | [LL-07] Delivery to site (Heet) - UPS (min. 4 h) & electrical panels | 3d | 2027-04-08 | 2027-04-10 | PRC-PWR40 | 144d | 0d | SAR-PROCUREMENT (7-day 8h) |
|  | 1.4.3.8 | **LL-08 Local-cloud hardware (KSA)** |  | 2027-03-04 | 2027-05-04 |  |  |  |  |
| PRC-CLD10 |  | [LL-08] Place PO & supplier kick-off - Local-cloud hardware & licences (KSA hosted) | 3d | 2027-03-04 | 2027-03-14 | APR-1540, APR-1640 | 81d | 0d |  |
| PRC-CLD20 |  | [LL-08] Manufacture / supply - Local-cloud hardware & licences (KSA hosted) | 28d | 2027-03-15 | 2027-04-11 | PRC-CLD10 | 119d | 0d | SAR-PROCUREMENT (7-day 8h) |
| FAT-CLD |  | [LL-08] FAT at manufacturer - Local-cloud hardware & licences (KSA hosted) | 3d | 2027-04-12 | 2027-04-14 | PRC-CLD20, APR-1660 | 119d | 0d | SAR-PROCUREMENT (7-day 8h) |
| PRC-CLD30 |  | [LL-08] Shipping / import - Local-cloud hardware & licences (KSA hosted) | 10d | 2027-04-15 | 2027-04-24 | FAT-CLD | 119d | 0d | SAR-PROCUREMENT (7-day 8h) |
| PRC-CLD40 |  | [LL-08] Customs clearance & SABER conformity - Local-cloud hardware & licences (KSA hosted) | 7d | 2027-04-25 | 2027-05-01 | PRC-CLD30 | 119d | 0d | SAR-PROCUREMENT (7-day 8h) |
| PRC-CLD50 |  | [LL-08] Delivery to site (Heet) - Local-cloud hardware & licences (KSA hosted) | 3d | 2027-05-02 | 2027-05-04 | PRC-CLD40 | 119d | 0d | SAR-PROCUREMENT (7-day 8h) |
|  | 1.4.3.9 | **LL-09 FO closures & accessories** |  | 2027-01-19 | 2027-03-14 |  |  |  |  |
| PRC-CLS10 |  | [LL-09] Place PO & supplier kick-off - FO closures, splice trays, connectors & pigtails | 3d | 2027-01-19 | 2027-01-21 | APR-1550 | 44d | 0d |  |
| PRC-CLS20 |  | [LL-09] Manufacture / supply - FO closures, splice trays, connectors & pigtails | 28d | 2027-01-22 | 2027-02-18 | PRC-CLS10 | 69d | 0d | SAR-PROCUREMENT (7-day 8h) |
| PRC-CLS30 |  | [LL-09] Shipping / import - FO closures, splice trays, connectors & pigtails | 14d | 2027-02-19 | 2027-03-04 | PRC-CLS20 | 69d | 0d | SAR-PROCUREMENT (7-day 8h) |
| PRC-CLS40 |  | [LL-09] Customs clearance & SABER conformity - FO closures, splice trays, connectors & pigtails | 7d | 2027-03-05 | 2027-03-11 | PRC-CLS30 | 69d | 0d | SAR-PROCUREMENT (7-day 8h) |
| PRC-CLS50 |  | [LL-09] Delivery to site (Heet) - FO closures, splice trays, connectors & pigtails | 3d | 2027-03-12 | 2027-03-14 | PRC-CLS40 | 69d |  | SAR-PROCUREMENT (7-day 8h) |
|  | 1.4.4 | **Standard / Local Items - PO, Supply & Delivery (handholes, conduits, marker posts, sweet sand)** |  | 2027-01-19 | 2027-02-14 |  |  |  |  |
| PRC-CND10 |  | Place PO & supplier kick-off - Steel & rigid conduits | 3d | 2027-01-19 | 2027-01-21 | APR-1550 | 51d | 0d |  |
| PRC-HH10 |  | Place PO & supplier kick-off - Handholes & manholes (precast) | 3d | 2027-01-19 | 2027-01-21 | APR-1550 | 46d | 0d |  |
| PRC-MRK10 |  | Place PO & supplier kick-off - Marker posts, warning tape & route markers | 3d | 2027-01-19 | 2027-01-21 | APR-1550 | 165d | 0d |  |
| PRC-SND10 |  | Arrange sweet-sand source, approval & stockpile at site | 7d | 2027-01-19 | 2027-01-25 | APR-1550 | 79d | 57d | SAR-PROCUREMENT (7-day 8h) |
| PRC-CND20 |  | Manufacture / supply - Steel & rigid conduits | 14d | 2027-01-22 | 2027-02-04 | PRC-CND10 | 80d | 0d | SAR-PROCUREMENT (7-day 8h) |
| PRC-HH20 |  | Manufacture / supply - Handholes & manholes (precast) | 21d | 2027-01-22 | 2027-02-11 | PRC-HH10 | 73d | 0d | SAR-PROCUREMENT (7-day 8h) |
| PRC-MRK20 |  | Manufacture / supply - Marker posts, warning tape & route markers | 14d | 2027-01-22 | 2027-02-04 | PRC-MRK10 | 244d | 0d | SAR-PROCUREMENT (7-day 8h) |
| PRC-CND50 |  | Delivery to site (Heet) - Steel & rigid conduits | 3d | 2027-02-05 | 2027-02-07 | PRC-CND20 | 80d | 58d | SAR-PROCUREMENT (7-day 8h) |
| PRC-MRK50 |  | Delivery to site (Heet) - Marker posts, warning tape & route markers | 3d | 2027-02-05 | 2027-02-07 | PRC-MRK20 | 244d | 118d | SAR-PROCUREMENT (7-day 8h) |
| PRC-HH50 |  | Delivery to site (Heet) - Handholes & manholes (precast) | 3d | 2027-02-12 | 2027-02-14 | PRC-HH20 | 73d | 51d | SAR-PROCUREMENT (7-day 8h) |

| ID | WBS | Activity | Duration | Start | Finish | Predecessors | Total float | Free float | Calendar |
| --- | --- | --- | --- | --- | --- | --- | --- | --- | --- |
|  | 1.5 | **CONSTRUCTION (C)** |  | 2027-03-24 | 2027-10-10 |  |  |  |  |
|  | 1.5.2 | **Enabling Works by Section (SoW 7): Civil, Cables, Splicing & Testing - risk-ranked** |  | 2027-03-24 | 2027-09-27 |  |  |  |  |
|  | 1.5.2.1 | **Section 1 (1,100 LM) - Civil Works, Cables Installation, Splicing & Testing** |  | 2027-03-24 | 2027-06-06 |  |  |  |  |
| CIV-110 |  | Section 1 - excavate trench (800x200 mm) & sweet-sand bedding, 1,100 LM | 10d | 2027-03-24 | 2027-04-06 | MOB-3010, PRC-SND10, MGT-1090 | 16d | 0d | SAR-FIELD (Sun-Thu 8h) |
| CIV-120 |  | Section 1 - handholes / manholes installation | 2d | 2027-04-07 | 2027-04-08 | CIV-110, PRC-HH50 | 16d |  | SAR-FIELD (Sun-Thu 8h) |
| CIV-130 |  | Section 1 - steel & rigid conduits at culverts / track crossings | 2d | 2027-04-07 | 2027-04-08 | CIV-110, PRC-CND50, PRM-2220 | 16d |  | SAR-FIELD (Sun-Thu 8h) |
| CAB-110 |  | Section 1 - Layer 1: lay DSS cable, pre-installed connectors, OTDR test | 4d | 2027-05-03 | 2027-05-06 | CIV-120, CIV-130, PRC-DSS50 | 0d |  | SAR-FIELD (Sun-Thu 8h) |
| CAB-120 |  | Section 1 - backfill & compaction - layer 1 | 2d | 2027-05-09 | 2027-05-10 | CAB-110 | 0d |  | SAR-FIELD (Sun-Thu 8h) |
| CAB-130 |  | Section 1 - Layer 2: pull 48-core FO cable (DAS), OTDR test | 4d | 2027-05-11 | 2027-05-20 | CAB-120, PRC-FO50 | 0d |  | SAR-FIELD (Sun-Thu 8h) |
| SPL-110 |  | Section 1 - fusion splicing (<=0.1 dB), FO closures & OTDR splice-loss test | 3d | 2027-05-23 | 2027-05-25 | CAB-130, PRC-CLS50 | 0d |  | SAR-FIELD (Sun-Thu 8h) |
| CAB-140 |  | Section 1 - backfill & compaction - layer 2 | 2d | 2027-05-26 | 2027-05-27 | SPL-110 | 0d |  | SAR-FIELD (Sun-Thu 8h) |
| CAB-150 |  | Section 1 - Layer 3: lay TDR coaxial cable, continuity test | 3d | 2027-05-30 | 2027-06-01 | CAB-140, PRC-TDRC50 | 0d |  | SAR-FIELD (Sun-Thu 8h) |
| CAB-160 |  | Section 1 - final backfill, compaction & reinstatement | 2d | 2027-06-02 | 2027-06-03 | CAB-150 | 0d |  | SAR-FIELD (Sun-Thu 8h) |
| CIV-140 |  | Section 1 - marker posts, warning tape & route markers | 1d | 2027-06-06 | 2027-06-06 | CAB-160, PRC-MRK50 | 89d |  | SAR-FIELD (Sun-Thu 8h) |
| TST-110 |  | Section 1 - final OTDR certification & test record | 1d | 2027-06-06 | 2027-06-06 | CAB-160 | 87d | 80d | SAR-FIELD (Sun-Thu 8h) |
|  | 1.5.2.2 | **Section 2 (1,100 LM) - Civil Works, Cables Installation, Splicing & Testing** |  | 2027-04-07 | 2027-07-04 |  |  |  |  |
| CIV-210 |  | Section 2 - excavate trench (800x200 mm) & sweet-sand bedding, 1,100 LM | 10d | 2027-04-07 | 2027-04-20 | CIV-110 | 26d | 0d | SAR-FIELD (Sun-Thu 8h) |
| CIV-220 |  | Section 2 - handholes / manholes installation | 2d | 2027-04-21 | 2027-04-22 | CIV-210, PRC-HH50 | 26d |  | SAR-FIELD (Sun-Thu 8h) |
| CIV-230 |  | Section 2 - steel & rigid conduits at culverts / track crossings | 2d | 2027-04-21 | 2027-04-22 | CIV-210, PRC-CND50, PRM-2220 | 26d |  | SAR-FIELD (Sun-Thu 8h) |
| CAB-210 |  | Section 2 - Layer 1: lay DSS cable, pre-installed connectors, OTDR test | 4d | 2027-06-06 | 2027-06-09 | CIV-220, CIV-230, PRC-DSS50, CAB-160 | 0d |  | SAR-FIELD (Sun-Thu 8h) |
| CAB-220 |  | Section 2 - backfill & compaction - layer 1 | 2d | 2027-06-10 | 2027-06-13 | CAB-210 | 0d |  | SAR-FIELD (Sun-Thu 8h) |
| CAB-230 |  | Section 2 - Layer 2: pull 48-core FO cable (DAS), OTDR test | 4d | 2027-06-14 | 2027-06-17 | CAB-220, PRC-FO50 | 0d |  | SAR-FIELD (Sun-Thu 8h) |
| SPL-210 |  | Section 2 - fusion splicing (<=0.1 dB), FO closures & OTDR splice-loss test | 3d | 2027-06-20 | 2027-06-22 | CAB-230, PRC-CLS50 | 0d |  | SAR-FIELD (Sun-Thu 8h) |
| CAB-240 |  | Section 2 - backfill & compaction - layer 2 | 2d | 2027-06-23 | 2027-06-24 | SPL-210 | 0d |  | SAR-FIELD (Sun-Thu 8h) |
| CAB-250 |  | Section 2 - Layer 3: lay TDR coaxial cable, continuity test | 3d | 2027-06-27 | 2027-06-29 | CAB-240, PRC-TDRC50 | 0d |  | SAR-FIELD (Sun-Thu 8h) |
| CAB-260 |  | Section 2 - final backfill, compaction & reinstatement | 2d | 2027-06-30 | 2027-07-01 | CAB-250 | 0d |  | SAR-FIELD (Sun-Thu 8h) |
| CIV-240 |  | Section 2 - marker posts, warning tape & route markers | 1d | 2027-07-04 | 2027-07-04 | CAB-260, PRC-MRK50 | 69d |  | SAR-FIELD (Sun-Thu 8h) |
| TST-210 |  | Section 2 - final OTDR certification & test record | 1d | 2027-07-04 | 2027-07-04 | CAB-260 | 67d | 60d | SAR-FIELD (Sun-Thu 8h) |

| ID | WBS | Activity | Duration | Start | Finish | Predecessors | Total float | Free float | Calendar |
| --- | --- | --- | --- | --- | --- | --- | --- | --- | --- |
|  | 1.5.2.3 | **Section 3 (1,100 LM) - Civil Works, Cables Installation, Splicing & Testing** |  | 2027-06-06 | 2027-08-01 |  |  |  |  |
| CIV-310 |  | Section 3 - excavate trench (800x200 mm) & sweet-sand bedding, 1,100 LM | 10d | 2027-06-06 | 2027-06-17 | CIV-210, CAB-160 | 8d | 0d | SAR-FIELD (Sun-Thu 8h) |
| CIV-320 |  | Section 3 - handholes / manholes installation | 2d | 2027-06-20 | 2027-06-21 | CIV-310, PRC-HH50 | 8d |  | SAR-FIELD (Sun-Thu 8h) |
| CIV-330 |  | Section 3 - steel & rigid conduits at culverts / track crossings | 2d | 2027-06-20 | 2027-06-21 | CIV-310, PRC-CND50, PRM-2220 | 8d |  | SAR-FIELD (Sun-Thu 8h) |
| CAB-310 |  | Section 3 - Layer 1: lay DSS cable, pre-installed connectors, OTDR test | 4d | 2027-07-04 | 2027-07-07 | CIV-320, CIV-330, PRC-DSS50, CAB-260 | 0d |  | SAR-FIELD (Sun-Thu 8h) |
| CAB-320 |  | Section 3 - backfill & compaction - layer 1 | 2d | 2027-07-08 | 2027-07-11 | CAB-310 | 0d |  | SAR-FIELD (Sun-Thu 8h) |
| CAB-330 |  | Section 3 - Layer 2: pull 48-core FO cable (DAS), OTDR test | 4d | 2027-07-12 | 2027-07-15 | CAB-320, PRC-FO50 | 0d |  | SAR-FIELD (Sun-Thu 8h) |
| SPL-310 |  | Section 3 - fusion splicing (<=0.1 dB), FO closures & OTDR splice-loss test | 3d | 2027-07-18 | 2027-07-20 | CAB-330, PRC-CLS50 | 0d |  | SAR-FIELD (Sun-Thu 8h) |
| CAB-340 |  | Section 3 - backfill & compaction - layer 2 | 2d | 2027-07-21 | 2027-07-22 | SPL-310 | 0d |  | SAR-FIELD (Sun-Thu 8h) |
| CAB-350 |  | Section 3 - Layer 3: lay TDR coaxial cable, continuity test | 3d | 2027-07-25 | 2027-07-27 | CAB-340, PRC-TDRC50 | 0d |  | SAR-FIELD (Sun-Thu 8h) |
| CAB-360 |  | Section 3 - final backfill, compaction & reinstatement | 2d | 2027-07-28 | 2027-07-29 | CAB-350 | 0d |  | SAR-FIELD (Sun-Thu 8h) |
| CIV-340 |  | Section 3 - marker posts, warning tape & route markers | 1d | 2027-08-01 | 2027-08-01 | CAB-360, PRC-MRK50 | 49d |  | SAR-FIELD (Sun-Thu 8h) |
| TST-310 |  | Section 3 - final OTDR certification & test record | 1d | 2027-08-01 | 2027-08-01 | CAB-360 | 47d | 40d | SAR-FIELD (Sun-Thu 8h) |
|  | 1.5.2.4 | **Section 4 (1,100 LM) - Civil Works, Cables Installation, Splicing & Testing** |  | 2027-07-04 | 2027-08-29 |  |  |  |  |
| CIV-410 |  | Section 4 - excavate trench (800x200 mm) & sweet-sand bedding, 1,100 LM | 10d | 2027-07-04 | 2027-07-15 | CIV-310, CAB-260 | 8d | 0d | SAR-FIELD (Sun-Thu 8h) |
| CIV-420 |  | Section 4 - handholes / manholes installation | 2d | 2027-07-18 | 2027-07-19 | CIV-410, PRC-HH50 | 8d |  | SAR-FIELD (Sun-Thu 8h) |
| CIV-430 |  | Section 4 - steel & rigid conduits at culverts / track crossings | 2d | 2027-07-18 | 2027-07-19 | CIV-410, PRC-CND50, PRM-2220 | 8d |  | SAR-FIELD (Sun-Thu 8h) |
| CAB-410 |  | Section 4 - Layer 1: lay DSS cable, pre-installed connectors, OTDR test | 4d | 2027-08-01 | 2027-08-04 | CIV-420, CIV-430, PRC-DSS50, CAB-360 | 0d |  | SAR-FIELD (Sun-Thu 8h) |
| CAB-420 |  | Section 4 - backfill & compaction - layer 1 | 2d | 2027-08-05 | 2027-08-08 | CAB-410 | 0d |  | SAR-FIELD (Sun-Thu 8h) |
| CAB-430 |  | Section 4 - Layer 2: pull 48-core FO cable (DAS), OTDR test | 4d | 2027-08-09 | 2027-08-12 | CAB-420, PRC-FO50 | 0d |  | SAR-FIELD (Sun-Thu 8h) |
| SPL-410 |  | Section 4 - fusion splicing (<=0.1 dB), FO closures & OTDR splice-loss test | 3d | 2027-08-15 | 2027-08-17 | CAB-430, PRC-CLS50 | 0d |  | SAR-FIELD (Sun-Thu 8h) |
| CAB-440 |  | Section 4 - backfill & compaction - layer 2 | 2d | 2027-08-18 | 2027-08-19 | SPL-410 | 0d |  | SAR-FIELD (Sun-Thu 8h) |
| CAB-450 |  | Section 4 - Layer 3: lay TDR coaxial cable, continuity test | 3d | 2027-08-22 | 2027-08-24 | CAB-440, PRC-TDRC50 | 0d |  | SAR-FIELD (Sun-Thu 8h) |
| CAB-460 |  | Section 4 - final backfill, compaction & reinstatement | 2d | 2027-08-25 | 2027-08-26 | CAB-450 | 0d |  | SAR-FIELD (Sun-Thu 8h) |
| CIV-440 |  | Section 4 - marker posts, warning tape & route markers | 1d | 2027-08-29 | 2027-08-29 | CAB-460, PRC-MRK50 | 29d |  | SAR-FIELD (Sun-Thu 8h) |
| TST-410 |  | Section 4 - final OTDR certification & test record | 1d | 2027-08-29 | 2027-08-29 | CAB-460 | 27d | 20d | SAR-FIELD (Sun-Thu 8h) |

| ID | WBS | Activity | Duration | Start | Finish | Predecessors | Total float | Free float | Calendar |
| --- | --- | --- | --- | --- | --- | --- | --- | --- | --- |
|  | 1.5.2.5 | **Section 5 (1,100 LM) - Civil Works, Cables Installation, Splicing & Testing** |  | 2027-08-01 | 2027-09-27 |  |  |  |  |
| CIV-510 |  | Section 5 - excavate trench (800x200 mm) & sweet-sand bedding, 1,100 LM | 10d | 2027-08-01 | 2027-08-12 | CIV-410, CAB-360 | 8d | 0d | SAR-FIELD (Sun-Thu 8h) |
| CIV-520 |  | Section 5 - handholes / manholes installation | 2d | 2027-08-15 | 2027-08-16 | CIV-510, PRC-HH50 | 8d |  | SAR-FIELD (Sun-Thu 8h) |
| CIV-530 |  | Section 5 - steel & rigid conduits at culverts / track crossings | 2d | 2027-08-15 | 2027-08-16 | CIV-510, PRC-CND50, PRM-2220 | 8d |  | SAR-FIELD (Sun-Thu 8h) |
| CAB-510 |  | Section 5 - Layer 1: lay DSS cable, pre-installed connectors, OTDR test | 4d | 2027-08-29 | 2027-09-01 | CIV-520, CIV-530, PRC-DSS50, CAB-460 | 0d |  | SAR-FIELD (Sun-Thu 8h) |
| CAB-520 |  | Section 5 - backfill & compaction - layer 1 | 2d | 2027-09-02 | 2027-09-05 | CAB-510 | 0d |  | SAR-FIELD (Sun-Thu 8h) |
| CAB-530 |  | Section 5 - Layer 2: pull 48-core FO cable (DAS), OTDR test | 4d | 2027-09-06 | 2027-09-09 | CAB-520, PRC-FO50 | 0d |  | SAR-FIELD (Sun-Thu 8h) |
| SPL-510 |  | Section 5 - fusion splicing (<=0.1 dB), FO closures & OTDR splice-loss test | 3d | 2027-09-12 | 2027-09-14 | CAB-530, PRC-CLS50 | 0d |  | SAR-FIELD (Sun-Thu 8h) |
| CAB-540 |  | Section 5 - backfill & compaction - layer 2 | 2d | 2027-09-15 | 2027-09-16 | SPL-510 | 0d |  | SAR-FIELD (Sun-Thu 8h) |
| CAB-550 |  | Section 5 - Layer 3: lay TDR coaxial cable, continuity test | 3d | 2027-09-19 | 2027-09-21 | CAB-540, PRC-TDRC50 | 0d |  | SAR-FIELD (Sun-Thu 8h) |
| CAB-560 |  | Section 5 - final backfill, compaction & reinstatement | 2d | 2027-09-22 | 2027-09-26 | CAB-550 | 7d | 0d | SAR-FIELD (Sun-Thu 8h) |
| CIV-540 |  | Section 5 - marker posts, warning tape & route markers | 1d | 2027-09-27 | 2027-09-27 | CAB-560, PRC-MRK50 | 9d |  | SAR-FIELD (Sun-Thu 8h) |
| TST-510 |  | Section 5 - final OTDR certification & test record | 1d | 2027-09-27 | 2027-09-27 | CAB-560 | 7d | 0d | SAR-FIELD (Sun-Thu 8h) |
|  | 1.5.3 | **Station Power, Shelter & Field Systems (TDR, Weather, Comms)** |  | 2027-03-24 | 2027-09-28 |  |  |  |  |
| SHL-3410 |  | Shelter expansion - civil works (if required per assessment) | 8d | 2027-03-24 | 2027-04-04 | PRM-2320, APR-1580, MOB-3010 | 104d | 4d | SAR-FIELD (Sun-Thu 8h) |
| PWR-3420 |  | Electrical installation - panels & power upgrade (incl. SEC connection) | 6d | 2027-04-11 | 2027-04-18 | SHL-3410, PRC-PWR50, PRM-2420 | 100d | 0d | SAR-FIELD (Sun-Thu 8h) |
| PWR-3430 |  | UPS installation & 4-hour autonomy test | 3d | 2027-04-19 | 2027-04-21 | PWR-3420 | 100d | 0d | SAR-FIELD (Sun-Thu 8h) |
| COM-3710 |  | Communication modules installation | 2d | 2027-04-22 | 2027-04-25 | PRC-COM50, PWR-3430 | 104d | 0d | SAR-FIELD (Sun-Thu 8h) |
| WX-3610 |  | Weather station sensors installation | 3d | 2027-04-22 | 2027-04-26 | PRC-WX50, PWR-3430 | 103d | 0d | SAR-FIELD (Sun-Thu 8h) |
| COM-3720 |  | SIM activation, alert & e-mail distribution configuration | 3d | 2027-04-26 | 2027-04-28 | COM-3710, PRM-2520 | 104d |  | SAR-FIELD (Sun-Thu 8h) |
| WX-3620 |  | Weather station integration with data logger | 3d | 2027-04-27 | 2027-04-29 | WX-3610 | 103d |  | SAR-FIELD (Sun-Thu 8h) |
| TDR-3510 |  | TDR system installation - interrogator & antenna | 5d | 2027-05-06 | 2027-05-12 | PRC-TDR50, PWR-3430 | 90d |  | SAR-FIELD (Sun-Thu 8h) |
| TDR-3520 |  | TDR configuration, calibration & pre-commissioning | 4d | 2027-09-22 | 2027-09-28 | TDR-3510, CAB-550 | 0d |  | SAR-FIELD (Sun-Thu 8h) |
|  | 1.5.4 | **Local Cloud, Cybersecurity & Integration Installation** |  | 2027-05-05 | 2027-10-10 |  |  |  |  |
| CLD-3810 |  | Local KSA cloud infrastructure - provisioning & set-up | 8d | 2027-05-05 | 2027-05-20 | PRC-CLD50, APR-1640 | 81d | 0d |  |
| CLD-3820 |  | Local KSA cloud infrastructure - hardening & connectivity | 8d | 2027-05-23 | 2027-06-01 | CLD-3810 | 83d | 2d |  |
| CYB-3920 |  | Cybersecurity controls implementation & hardening | 10d | 2027-05-23 | 2027-06-03 | CLD-3810, APR-1640 | 81d | 0d |  |
| INT-4010 |  | Integration with existing system & iSiteCentral - interfaces & data mapping | 8d | 2027-09-29 | 2027-10-10 | CLD-3820, APR-1650, PRM-2620, TDR-3520, COM-3720, WX-3620 | 0d |  |  |

| ID | WBS | Activity | Duration | Start | Finish | Predecessors | Total float | Free float | Calendar |
| --- | --- | --- | --- | --- | --- | --- | --- | --- | --- |
|  | 1.6 | **TESTING, COMMISSIONING & HANDOVER (TC)** |  | 2027-06-06 | 2027-12-07 |  |  |  |  |
|  | 1.6.1 | **Testing & Site Acceptance (OTDR, SAT, Integration, Cyber Audit)** |  | 2027-06-06 | 2027-10-17 |  |  |  |  |
| CYB-3930 |  | Third-party cybersecurity audit | 10d | 2027-06-06 | 2027-06-17 | CYB-3920, CLD-3820 | 81d | 0d |  |
| CYB-3940 |  | Audit findings closure & verification | 4d | 2027-06-20 | 2027-06-23 | CYB-3930 | 81d |  |  |
| TST-4110 |  | Full-route OTDR certification report & as-installed test records | 2d | 2027-09-28 | 2027-09-29 | TST-110, TST-210, TST-310, TST-410, TST-510 | 7d |  |  |
| INT-4020 |  | End-to-end integration test with existing system & iSiteCentral (part of SAT) | 5d | 2027-10-11 | 2027-10-17 | MS-070, INT-4010, PRM-3120 | 0d |  |  |
| TST-4210 |  | SAT - site acceptance tests (sensors, power, communications, operational) | 5d | 2027-10-11 | 2027-10-17 | TST-4110, PRM-3120, APR-1670, MS-070 | 0d |  | SAR-FIELD (Sun-Thu 8h) |
|  | 1.6.2 | **Commissioning & Performance Validation** |  | 2027-10-18 | 2027-11-07 |  |  |  |  |
| CMS-4310 |  | System commissioning & calibration - DAS, DSS, TDR & weather station | 5d | 2027-10-18 | 2027-10-24 | TST-4210, INT-4020, CYB-3940 | 0d |  | SAR-FIELD (Sun-Thu 8h) |
| CMS-4320 |  | Trial operation - baseline data collection & performance validation | 10d | 2027-10-25 | 2027-11-07 | CMS-4310 | 0d |  |  |
|  | 1.6.3 | **Documentation & Training** |  | 2027-10-25 | 2027-11-15 |  |  |  |  |
| DOC-5020 |  | As-built drawings (3 sets, hard + soft) - final revision after SAT | 6d | 2027-10-25 | 2027-11-01 | CMS-4310 | 10d |  |  |
| DOC-5030 |  | O&M manuals (3 sets) - final revision | 6d | 2027-10-25 | 2027-11-01 | CMS-4310 | 10d |  |  |
| DOC-5040 |  | User training for SAR staff (5 days) | 5d | 2027-10-25 | 2027-10-31 | CMS-4310 | 21d | 5d |  |
| DOC-5010 |  | Technical reports - TDR, DAS (seismic), DSS strain, weather data & alerts | 6d | 2027-11-08 | 2027-11-15 | MS-100 | 0d |  |  |
|  | 1.6.4 | **Handover Submittals (Contractor)** |  | 2027-11-16 | 2027-12-01 |  |  |  |  |
| DOC-5050 |  | Handover dossier - QA/QC, material test & HSE records, reports - compile & submit | 2d | 2027-11-16 | 2027-11-17 | DOC-5010, DOC-5020, DOC-5030 | 0d |  |  |
| SUB-5070 |  | Address SAR comments & resubmit dossier | 3d | 2027-11-29 | 2027-12-01 | APR-5060 | 0d |  |  |
|  | 1.6.5 | **SAR Acceptance & Formal Handover** |  | 2027-11-18 | 2027-12-07 |  |  |  |  |
| APR-5060 |  | SAR review of handover dossier (as-builts, O&M, reports) | 7d | 2027-11-18 | 2027-11-28 | DOC-5050 | 0d |  |  |
| APR-5080 |  | SAR final acceptance of handover dossier | 3d | 2027-12-02 | 2027-12-06 | SUB-5070 | 0d |  |  |
| HND-5090 |  | Formal handover & Taking-Over certificate (SAR) | 1d | 2027-12-07 | 2027-12-07 | APR-5080, DEM-5100 | 0d |  |  |
|  | 1.7 | **DEFECTS LIABILITY PERIOD - POST-COMPLETION (DLP)** |  | 2027-12-08 | 2028-12-07 |  |  |  |  |
| DLP-9020 |  | Defects liability support (12 months after Taking-Over) | 366d | 2027-12-08 | 2028-12-07 | MS-120 | 0d |  | SAR-PROCUREMENT (7-day 8h) |
